# IST345S21A2ChenW

Schedule from MS Project, 2021-03-09 to 2021-06-29, 5 hours a day, costs in $.

## Calendars

- Standard: Mon-Fri 08:00-12:00, 13:00-17:00; Sat-Sun off. Exceptions (off unless hours are given): 2021-05-31 (Memorial Day), 2021-06-26 to 2021-06-27 10:00-12:59, 13:00-15:00 (Go-live).

## Resources

| Resource | Rate |
| --- | --- |
| P1-Information Security Setup | 35997 |
| P2-Chevron SOX Compliance | 32225 |
| P3-Land Data Conversion | 199200 |
| P4-Document Conversion | 112224 |
| P5-GIS Integration to CP's ArkMap | 29825 |
| P6-GIS Integration to ChevMap | 35685 |
| P7-Account Integration | 12625 |
| P8-Successful System Testing | 59458 |
| P9-Training and End User Acceptance Testing | 30000 |
| P10-Statement of Completion | 37725 |
| Joel Thomas |  |
| Reggie Pratcher |  |
| Michael Hensel |  |
| Geddy Lee |  |
| Jennifer Williams |  |
| Kristina Squire |  |
| Steven Markman |  |
| Raymond Bragman |  |
| Rebecca Young |  |
| Andrew Hopmann |  |
| Michol Ecklund |  |
| Rex Bigler |  |
| Jeff Balmer |  |
| Corey Bolding |  |
| William Chen | 80 |
| Michelle Alexander | 80 |
| Mark Collier | 70 |
| Rebekeh Granbery | 50 |
| Stanley Estep | 50 |
| Jason Donahue | 50 |
| Farida Hussain | 75 |
| Beth Young | 60 |
| Larry Olga | 60 |
| Jacqueline Webster | 50 |
| Sandra Verry | 50 |
| Richard Hand | 50 |
| Sarah Henson | 50 |
| Cherise Johnson | 60 |
| Bryan Chapman | 60 |
| Barbara Thompson | 60 |
| Tyler Sullivan | 75 |
| P11-Software Subscription | 85250 |

## Schedule

| ID | WBS | Task | Type | Duration | Start | Finish | Predecessors | Total slack | Resources | Work | Cost |
| --- | --- | --- | --- | --- | --- | --- | --- | --- | --- | --- | --- |
| 1 | 1 | **Evaluate needs for new information system** |  | 2.4d | 2021-03-09 10:00 | 2021-03-10 15:00 |  | 0d |  | 50h | 2,910 |
| 2 | 1.1 | Identify problems with current information system |  | 1d | 2021-03-09 10:00 | 2021-03-09 16:00 |  | 0d | Farida Hussain; Mark Collier; Rebekeh Granbery; William Chen | 20h | 1,375 |
| 3 | 1.2 | Identify necessary changes and needs for new information system |  | 1d | 2021-03-09 16:00 | 2021-03-10 12:00 | 2 | 0d | Farida Hussain; Mark Collier; Rebekeh Granbery; William Chen | 20h | 1,375 |
| 4 | 1.3 | Introduce Land Information Systems/LandVantage (LIS/LV) to Callon Petroleum (CP) and Chevron and determine if it meets CP/Chevron's needs |  | 0.4d | 2021-03-10 13:00 | 2021-03-10 15:00 | 3 | 0d | Corey Bolding; Jeff Balmer; Michol Ecklund; Rex Bigler; William Chen | 10h | 160 |
| 5 | 2 | **Prepare for LIS demonstration** |  | 2.2d | 2021-03-10 15:00 | 2021-03-12 09:00 |  | 0d |  | 37h | 1,220 |
| 6 | 2.1 | Create a project charter |  | 1.4d | 2021-03-10 15:00 | 2021-03-11 14:00 | 4 | 0d | William Chen | 7h | 560 |
| 7 | 2.2 | Present charter to executive team |  | 0.4d | 2021-03-11 14:00 | 2021-03-11 16:00 | 6 | 0d | Michol Ecklund; Rex Bigler; William Chen; Jeff Balmer | 8h | 160 |
| 8 | 2.3 | Chater approved by sponsors and top management | milestone | 0d | 2021-03-11 16:00 | 2021-03-11 16:00 | 7 | 0d | Michol Ecklund; Rex Bigler; Jeff Balmer |  |  |
| 9 | 2.4 | LIS demonstrates LandVantage software |  | 0.4d | 2021-03-11 16:00 | 2021-03-12 09:00 | 8 | 0d | Jeff Balmer; Jennifer Williams; Joel Thomas; Michol Ecklund; Rebecca Young; Reggie Pratcher; Rex Bigler; William Chen; Mark Collier; Rebekeh Granbery; Stanley Estep | 22h | 500 |
| 10 | 2.5 | Approval to move forward with LIS | milestone | 0d | 2021-03-12 09:00 | 2021-03-12 09:00 | 9 | 0d | Michol Ecklund; William Chen; Jeff Balmer; Rex Bigler |  |  |
| 11 | 3 | **Negotiation Phase** |  | 4.63d? | 2021-03-12 09:00 | 2021-03-17 08:08 |  | 0d |  | 45h | 1,221.43 |
| 12 | 3.1 | Conduct a meeting with follow up questions for LIS |  | 0.2d | 2021-03-12 09:00 | 2021-03-12 10:00 | 10 | 0d | Jennifer Williams; Joel Thomas; Michol Ecklund; Rebecca Young; Reggie Pratcher; Rex Bigler; William Chen; Rebekeh Granbery; Stanley Estep; Jeff Balmer; Mark Collier | 11h | 250 |
| 13 | 3.2 | Approval of LV software and moving forward with LIS to create the Statement of Work (SOW) | milestone | 0d | 2021-03-12 10:00 | 2021-03-12 10:00 | 12 | 0d | Michol Ecklund; Rex Bigler; William Chen; Jeff Balmer |  |  |
| 14 | 3.3 | Create SOW |  | 1d | 2021-03-12 10:00 | 2021-03-12 16:00 | 13 | 0d | William Chen | 5h | 400 |
| 15 | 3.4 | Approval of SOW by executives and signed for by LIS | milestone | 0d? | 2021-03-16 09:00 | 2021-03-16 09:00 | 14FS+2d | 0d | Reggie Pratcher; William Chen; Jeff Balmer; Michol Ecklund; Rex Bigler |  |  |
| 16 | 3.5 | **Draw a contract between LIS and CP** |  | 1.43d? | 2021-03-16 09:00 | 2021-03-17 08:08 |  | 0d |  | 29h | 571.43 |
| 17 | 3.5.1 | Hold a meeting to negotiate contract |  | 0.4d? | 2021-03-16 09:00 | 2021-03-16 11:00 | 15 | 0d | William Chen; Jeff Balmer; Michol Ecklund; Raymond Bragman; Rebecca Young; Reggie Pratcher; Rex Bigler; Steven Markman; Joel Thomas | 18h | 160 |
| 18 | 3.5.2 | Review and finalize/revise negotiated contract |  | 1d? | 2021-03-16 11:00 | 2021-03-16 17:00 | 17 | 0d | Reggie Pratcher; William Chen | 10h | 400 |
| 19 | 3.5.3 | Sign contract with LIS and CP |  | 0.03d? | 2021-03-17 08:00 | 2021-03-17 08:08 | 18 | 0d | Michol Ecklund; Reggie Pratcher; Rex Bigler; William Chen; Jeff Balmer; Rebecca Young; Raymond Bragman | 1h | 11.43 |
| 20 | 4 | **Initiate Project** |  | 1.8d? | 2021-03-17 08:08 | 2021-03-18 09:08 |  | 0d |  | 118h | 4,520 |
| 21 | 4.1 | Hold meeting with team to establish roles, expectations, and communication |  | 0.4d? | 2021-03-17 08:08 | 2021-03-17 10:08 | 19 | 0d | Reggie Pratcher; William Chen; Andrew Hopmann; Barbara Thompson; Beth Young; Bryan Chapman; Cherise Johnson; Farida Hussain; Geddy Lee; Jacqueline Webster; Jason Donahue; Jennifer Williams; Joel Thomas; Kristina Squire; Larry Olga; Mark Collier; Michael Hensel; Michelle Alexander; Raymond Bragman; Rebecca Young; Rebekeh Granbery; Richard Hand; Sandra Verry; Sarah Henson; Stanley Estep; Steven Markman; Tyler Sullivan | 54h | 2,060 |
| 22 | 4.2 | **Create a Work Breakdown Structure (WBS)** |  | 1.4d? | 2021-03-17 10:08 | 2021-03-18 09:08 |  | 0d |  | 64h | 2,460 |
| 23 | 4.2.1 | Present WBS to project team |  | 0.4d? | 2021-03-17 10:08 | 2021-03-17 13:08 | 21 | 0d | Andrew Hopmann; Barbara Thompson; Beth Young; Bryan Chapman; Cherise Johnson; Farida Hussain; Geddy Lee; Jacqueline Webster; Jason Donahue; Jennifer Williams; Joel Thomas; Kristina Squire; Larry Olga; Mark Collier; Michael Hensel; Michelle Alexander; Raymond Bragman; Rebecca Young; Rebekeh Granbery; Reggie Pratcher; Richard Hand; Sandra Verry; Sarah Henson; Stanley Estep; Steven Markman; Tyler Sullivan; William Chen | 54h | 2,060 |
| 24 | 4.2.2 | Update WBS according to feedback |  | 1d? | 2021-03-17 13:08 | 2021-03-18 09:08 | 23 | 0d | William Chen; Reggie Pratcher | 10h | 400 |
| 25 | 4.2.3 | Project team approves WBS | milestone | 0d? | 2021-03-18 09:08 | 2021-03-18 09:08 | 24 | 0d | Reggie Pratcher; William Chen; Jeff Balmer; Michol Ecklund; Rex Bigler; Corey Bolding |  |  |

Notes:
- 9: Full team meeting (11 employees, 2 hours)
- 12: 1 employees, 1 hour
- 17: 9 employees, 2 hours
- 21: 27 employees, 2 hours each
- 23: 27 employees, 2 hours each

| ID | WBS | Task | Duration | Start | Finish | Predecessors | Total slack | Free slack | Constraint | Resources | Work | Cost |
| --- | --- | --- | --- | --- | --- | --- | --- | --- | --- | --- | --- | --- |
| 26 | 5 | **Manage Project** | 128.79d? | 2021-03-09 10:00 | 2021-06-29 12:00 |  | 0.37d |  |  |  | 780h | 38,840 |
| 27 | 5.1 | **Hold team meetings to discuss project needs** | 128.59d? | 2021-03-09 10:00 | 2021-06-29 11:00 |  | 0.57d |  |  |  | 458h | 23,320 |
| 28 | 5.1.1 | **Talk to LIS to discuss needs for the project** | 1.45d? | 2021-03-18 09:08 | 2021-03-19 08:23 |  | 116.68d |  |  |  | 35h | 580 |
| 29 | 5.1.1.1 | Discuss potential risks with implementation | 0.56d? | 2021-03-18 09:08 | 2021-03-18 11:56 | 25 | 109.22d | 0d |  | Geddy Lee; Joel Thomas; Rebecca Young; Reggie Pratcher; William Chen | 14h | 224 |
| 30 | 5.1.1.2 | Discuss implementation plans | 0.4d? | 2021-03-18 11:56 | 2021-03-18 14:56 | 25, 29 | 109.22d | 0d |  | Geddy Lee; Reggie Pratcher; William Chen; Joel Thomas; Rebecca Young | 10h | 160 |
| 31 | 5.1.1.3 | Discuss potential last minute changes to the project | 0.24d? | 2021-03-18 14:56 | 2021-03-18 16:08 | 25, 29, 30 | 109.22d | 0d |  | Geddy Lee; Joel Thomas; Rebecca Young; Reggie Pratcher; William Chen | 6h | 96 |
| 32 | 5.1.1.4 | Get approval from the project team | 0.25d? | 2021-03-18 16:08 | 2021-03-19 08:23 | 31 | 109.22d |  |  | William Chen; Jeff Balmer; Michol Ecklund; Rex Bigler | 5h | 100 |
| 33 | 5.1.2 | **Conduct weekly team meetings to discuss progress/status** | 120.79d | 2021-03-15 10:00 | 2021-06-28 12:00 |  | 1.97d |  |  |  | 360h | 21,300 |
| 34 | 5.1.2.1 | Conduct weekly team meetings to discuss progress/status 1 | 0.4d | 2021-03-15 10:00 | 2021-03-15 12:00 |  | 122.36d |  | start no earlier than 2021-03-15 10:00 | Barbara Thompson; Bryan Chapman; Cherise Johnson; Farida Hussain; Jason Donahue; Mark Collier; Michelle Alexander; Rebekeh Granbery; Reggie Pratcher; Stanley Estep; Tyler Sullivan; William Chen | 24h | 1,420 |
| 35 | 5.1.2.2 | Conduct weekly team meetings to discuss progress/status 2 | 0.4d | 2021-03-22 10:00 | 2021-03-22 12:00 |  | 114.36d |  | start no earlier than 2021-03-22 10:00 | Barbara Thompson; Bryan Chapman; Cherise Johnson; Farida Hussain; Jason Donahue; Mark Collier; Michelle Alexander; Rebekeh Granbery; Reggie Pratcher; Stanley Estep; Tyler Sullivan; William Chen | 24h | 1,420 |
| 36 | 5.1.2.3 | Conduct weekly team meetings to discuss progress/status 3 | 0.4d | 2021-03-29 10:00 | 2021-03-29 12:00 |  | 106.36d |  | start no earlier than 2021-03-29 10:00 | Barbara Thompson; Bryan Chapman; Cherise Johnson; Farida Hussain; Jason Donahue; Mark Collier; Michelle Alexander; Rebekeh Granbery; Reggie Pratcher; Stanley Estep; Tyler Sullivan; William Chen | 24h | 1,420 |
| 37 | 5.1.2.4 | Conduct weekly team meetings to discuss progress/status 4 | 0.4d | 2021-04-05 10:00 | 2021-04-05 12:00 |  | 98.36d |  | start no earlier than 2021-04-05 10:00 | Barbara Thompson; Bryan Chapman; Cherise Johnson; Farida Hussain; Jason Donahue; Mark Collier; Michelle Alexander; Rebekeh Granbery; Reggie Pratcher; Stanley Estep; Tyler Sullivan; William Chen | 24h | 1,420 |
| 38 | 5.1.2.5 | Conduct weekly team meetings to discuss progress/status 5 | 0.4d | 2021-04-12 10:00 | 2021-04-12 12:00 |  | 90.36d |  | start no earlier than 2021-04-12 10:00 | Barbara Thompson; Bryan Chapman; Cherise Johnson; Farida Hussain; Jason Donahue; Mark Collier; Michelle Alexander; Rebekeh Granbery; Reggie Pratcher; Stanley Estep; Tyler Sullivan; William Chen | 24h | 1,420 |
| 39 | 5.1.2.6 | Conduct weekly team meetings to discuss progress/status 6 | 0.4d | 2021-04-19 10:00 | 2021-04-19 12:00 |  | 82.36d |  | start no earlier than 2021-04-19 10:00 | Barbara Thompson; Bryan Chapman; Cherise Johnson; Farida Hussain; Jason Donahue; Mark Collier; Michelle Alexander; Rebekeh Granbery; Reggie Pratcher; Stanley Estep; Tyler Sullivan; William Chen | 24h | 1,420 |
| 40 | 5.1.2.7 | Conduct weekly team meetings to discuss progress/status 7 | 0.4d | 2021-04-26 10:00 | 2021-04-26 12:00 |  | 74.36d |  | start no earlier than 2021-04-26 10:00 | Barbara Thompson; Bryan Chapman; Cherise Johnson; Farida Hussain; Jason Donahue; Mark Collier; Michelle Alexander; Rebekeh Granbery; Reggie Pratcher; Stanley Estep; Tyler Sullivan; William Chen | 24h | 1,420 |
| 41 | 5.1.2.8 | Conduct weekly team meetings to discuss progress/status 8 | 0.4d | 2021-05-03 10:00 | 2021-05-03 12:00 |  | 66.36d |  | start no earlier than 2021-05-03 10:00 | Barbara Thompson; Bryan Chapman; Cherise Johnson; Farida Hussain; Jason Donahue; Mark Collier; Michelle Alexander; Rebekeh Granbery; Reggie Pratcher; Stanley Estep; Tyler Sullivan; William Chen | 24h | 1,420 |
| 42 | 5.1.2.9 | Conduct weekly team meetings to discuss progress/status 9 | 0.4d | 2021-05-10 10:00 | 2021-05-10 12:00 |  | 58.36d |  | start no earlier than 2021-05-10 10:00 | Barbara Thompson; Bryan Chapman; Cherise Johnson; Farida Hussain; Jason Donahue; Mark Collier; Michelle Alexander; Rebekeh Granbery; Reggie Pratcher; Stanley Estep; Tyler Sullivan; William Chen | 24h | 1,420 |
| 43 | 5.1.2.10 | Conduct weekly team meetings to discuss progress/status 10 | 0.4d | 2021-05-17 10:00 | 2021-05-17 12:00 |  | 50.36d |  | start no earlier than 2021-05-17 10:00 | Barbara Thompson; Bryan Chapman; Cherise Johnson; Farida Hussain; Jason Donahue; Mark Collier; Michelle Alexander; Rebekeh Granbery; Reggie Pratcher; Stanley Estep; Tyler Sullivan; William Chen | 24h | 1,420 |
| 44 | 5.1.2.11 | Conduct weekly team meetings to discuss progress/status 11 | 0.4d | 2021-05-24 10:00 | 2021-05-24 12:00 |  | 42.36d |  | start no earlier than 2021-05-24 10:00 | Barbara Thompson; Bryan Chapman; Cherise Johnson; Farida Hussain; Jason Donahue; Mark Collier; Michelle Alexander; Rebekeh Granbery; Reggie Pratcher; Stanley Estep; Tyler Sullivan; William Chen | 24h | 1,420 |
| 45 | 5.1.2.12 | Conduct weekly team meetings to discuss progress/status 12 | 0.4d | 2021-06-07 10:00 | 2021-06-07 12:00 |  | 27.96d |  | start no earlier than 2021-06-07 10:00 | Barbara Thompson; Bryan Chapman; Cherise Johnson; Farida Hussain; Jason Donahue; Mark Collier; Michelle Alexander; Rebekeh Granbery; Reggie Pratcher; Stanley Estep; Tyler Sullivan; William Chen | 24h | 1,420 |
| 46 | 5.1.2.13 | Conduct weekly team meetings to discuss progress/status 13 | 0.4d | 2021-06-14 10:00 | 2021-06-14 12:00 |  | 19.96d |  | start no earlier than 2021-06-14 10:00 | Barbara Thompson; Bryan Chapman; Cherise Johnson; Farida Hussain; Jason Donahue; Mark Collier; Michelle Alexander; Rebekeh Granbery; Reggie Pratcher; Stanley Estep; Tyler Sullivan; William Chen | 24h | 1,420 |
| 47 | 5.1.2.14 | Conduct weekly team meetings to discuss progress/status 14 | 0.4d | 2021-06-21 10:00 | 2021-06-21 12:00 |  | 11.96d |  | start no earlier than 2021-06-21 10:00 | Barbara Thompson; Bryan Chapman; Cherise Johnson; Farida Hussain; Jason Donahue; Mark Collier; Michelle Alexander; Rebekeh Granbery; Reggie Pratcher; Stanley Estep; Tyler Sullivan; William Chen | 24h | 1,420 |
| 48 | 5.1.2.15 | Conduct weekly team meetings to discuss progress/status 15 | 0.4d | 2021-06-28 10:00 | 2021-06-28 12:00 |  | 1.97d |  | start no earlier than 2021-06-28 10:00 | Barbara Thompson; Bryan Chapman; Cherise Johnson; Farida Hussain; Jason Donahue; Mark Collier; Michelle Alexander; Rebekeh Granbery; Reggie Pratcher; Stanley Estep; Tyler Sullivan; William Chen | 24h | 1,420 |
| 49 | 5.1.3 | **Conduct bi-weekly meeting with executives** | 128.59d | 2021-03-09 10:00 | 2021-06-29 11:00 |  | 0.57d |  |  |  | 63h | 1,440 |
| 50 | 5.1.3.1 | Conduct bi-weekly meeting with executives 1 | 0.2d | 2021-03-09 10:00 | 2021-03-09 11:00 |  | 128.96d |  | start no earlier than 2021-03-09 10:00 | Corey Bolding; Jeff Balmer; Michol Ecklund; Reggie Pratcher; Rex Bigler; William Chen; Michelle Alexander | 7h | 160 |
| 51 | 5.1.3.2 | Conduct bi-weekly meeting with executives 2 | 0.2d | 2021-03-23 10:00 | 2021-03-23 11:00 |  | 112.96d |  | start no earlier than 2021-03-23 10:00 | Corey Bolding; Jeff Balmer; Michol Ecklund; Reggie Pratcher; Rex Bigler; William Chen; Michelle Alexander | 7h | 160 |
| 52 | 5.1.3.3 | Conduct bi-weekly meeting with executives 3 | 0.2d | 2021-04-06 10:00 | 2021-04-06 11:00 |  | 96.96d |  | start no earlier than 2021-04-06 10:00 | Corey Bolding; Jeff Balmer; Michol Ecklund; Reggie Pratcher; Rex Bigler; William Chen; Michelle Alexander | 7h | 160 |
| 53 | 5.1.3.4 | Conduct bi-weekly meeting with executives 4 | 0.2d | 2021-04-20 10:00 | 2021-04-20 11:00 |  | 80.96d |  | start no earlier than 2021-04-20 10:00 | Corey Bolding; Jeff Balmer; Michol Ecklund; Reggie Pratcher; Rex Bigler; William Chen; Michelle Alexander | 7h | 160 |
| 54 | 5.1.3.5 | Conduct bi-weekly meeting with executives 5 | 0.2d | 2021-05-04 10:00 | 2021-05-04 11:00 |  | 64.96d |  | start no earlier than 2021-05-04 10:00 | Corey Bolding; Jeff Balmer; Michol Ecklund; Reggie Pratcher; Rex Bigler; William Chen; Michelle Alexander | 7h | 160 |
| 55 | 5.1.3.6 | Conduct bi-weekly meeting with executives 6 | 0.2d | 2021-05-18 10:00 | 2021-05-18 11:00 |  | 48.96d |  | start no earlier than 2021-05-18 10:00 | Corey Bolding; Jeff Balmer; Michol Ecklund; Reggie Pratcher; Rex Bigler; William Chen; Michelle Alexander | 7h | 160 |
| 56 | 5.1.3.7 | Conduct bi-weekly meeting with executives 7 | 0.2d | 2021-06-01 10:00 | 2021-06-01 11:00 |  | 34.56d |  | start no earlier than 2021-06-01 10:00 | Corey Bolding; Jeff Balmer; Michol Ecklund; Reggie Pratcher; Rex Bigler; William Chen; Michelle Alexander | 7h | 160 |
| 57 | 5.1.3.8 | Conduct bi-weekly meeting with executives 8 | 0.2d | 2021-06-15 10:00 | 2021-06-15 11:00 |  | 18.56d |  | start no earlier than 2021-06-15 10:00 | Corey Bolding; Jeff Balmer; Michol Ecklund; Reggie Pratcher; Rex Bigler; William Chen; Michelle Alexander | 7h | 160 |
| 58 | 5.1.3.9 | Conduct bi-weekly meeting with executives 9 | 0.2d | 2021-06-29 10:00 | 2021-06-29 11:00 |  | 0.57d |  | start no earlier than 2021-06-29 10:00 | Corey Bolding; Jeff Balmer; Michol Ecklund; Reggie Pratcher; Rex Bigler; William Chen; Michelle Alexander | 7h | 160 |

Notes:
- 34: 12 people, 2 hours each
- 50: 7 people, 1 hour each

| ID | WBS | Task | Duration | Start | Finish | Total slack | Constraint | Resources | Work | Cost |
| --- | --- | --- | --- | --- | --- | --- | --- | --- | --- | --- |
| 59 | 5.2 | **Control Scope** | 128.79d | 2021-03-09 10:00 | 2021-06-29 12:00 | 0.37d |  |  | 322h | 15,520 |
| 60 | 5.2.1 | **Develop weekly status reports** | 118.8d | 2021-03-12 10:00 | 2021-06-25 12:00 | 5.56d |  |  | 96h | 5,120 |
| 61 | 5.2.1.1 | Develop weekly status reports 1 | 0.4d | 2021-03-12 10:00 | 2021-03-12 12:00 | 123.96d | start no earlier than 2021-03-12 10:00 | Reggie Pratcher; William Chen; Michelle Alexander | 6h | 320 |
| 62 | 5.2.1.2 | Develop weekly status reports 2 | 0.4d | 2021-03-19 10:00 | 2021-03-19 12:00 | 115.96d | start no earlier than 2021-03-19 10:00 | Reggie Pratcher; William Chen; Michelle Alexander | 6h | 320 |
| 63 | 5.2.1.3 | Develop weekly status reports 3 | 0.4d | 2021-03-26 10:00 | 2021-03-26 12:00 | 107.96d | start no earlier than 2021-03-26 10:00 | Reggie Pratcher; William Chen; Michelle Alexander | 6h | 320 |
| 64 | 5.2.1.4 | Develop weekly status reports 4 | 0.4d | 2021-04-02 10:00 | 2021-04-02 12:00 | 99.96d | start no earlier than 2021-04-02 10:00 | Reggie Pratcher; William Chen; Michelle Alexander | 6h | 320 |
| 65 | 5.2.1.5 | Develop weekly status reports 5 | 0.4d | 2021-04-09 10:00 | 2021-04-09 12:00 | 91.96d | start no earlier than 2021-04-09 10:00 | Reggie Pratcher; William Chen; Michelle Alexander | 6h | 320 |
| 66 | 5.2.1.6 | Develop weekly status reports 6 | 0.4d | 2021-04-16 10:00 | 2021-04-16 12:00 | 83.96d | start no earlier than 2021-04-16 10:00 | Reggie Pratcher; William Chen; Michelle Alexander | 6h | 320 |
| 67 | 5.2.1.7 | Develop weekly status reports 7 | 0.4d | 2021-04-23 10:00 | 2021-04-23 12:00 | 75.96d | start no earlier than 2021-04-23 10:00 | Reggie Pratcher; William Chen; Michelle Alexander | 6h | 320 |
| 68 | 5.2.1.8 | Develop weekly status reports 8 | 0.4d | 2021-04-30 10:00 | 2021-04-30 12:00 | 67.96d | start no earlier than 2021-04-30 10:00 | Reggie Pratcher; William Chen; Michelle Alexander | 6h | 320 |
| 69 | 5.2.1.9 | Develop weekly status reports 9 | 0.4d | 2021-05-07 10:00 | 2021-05-07 12:00 | 59.96d | start no earlier than 2021-05-07 10:00 | Reggie Pratcher; William Chen; Michelle Alexander | 6h | 320 |
| 70 | 5.2.1.10 | Develop weekly status reports 10 | 0.4d | 2021-05-14 10:00 | 2021-05-14 12:00 | 51.96d | start no earlier than 2021-05-14 10:00 | Reggie Pratcher; William Chen; Michelle Alexander | 6h | 320 |
| 71 | 5.2.1.11 | Develop weekly status reports 11 | 0.4d | 2021-05-21 10:00 | 2021-05-21 12:00 | 43.96d | start no earlier than 2021-05-21 10:00 | Reggie Pratcher; William Chen; Michelle Alexander | 6h | 320 |
| 72 | 5.2.1.12 | Develop weekly status reports 12 | 0.4d | 2021-05-28 10:00 | 2021-05-28 12:00 | 35.96d | start no earlier than 2021-05-28 10:00 | Reggie Pratcher; William Chen; Michelle Alexander | 6h | 320 |
| 73 | 5.2.1.13 | Develop weekly status reports 13 | 0.4d | 2021-06-04 10:00 | 2021-06-04 12:00 | 29.56d | start no earlier than 2021-06-04 10:00 | Reggie Pratcher; William Chen; Michelle Alexander | 6h | 320 |
| 74 | 5.2.1.14 | Develop weekly status reports 14 | 0.4d | 2021-06-11 10:00 | 2021-06-11 12:00 | 21.56d | start no earlier than 2021-06-11 10:00 | Reggie Pratcher; William Chen; Michelle Alexander | 6h | 320 |
| 75 | 5.2.1.15 | Develop weekly status reports 15 | 0.4d | 2021-06-18 10:00 | 2021-06-18 12:00 | 13.56d | start no earlier than 2021-06-18 10:00 | Reggie Pratcher; William Chen; Michelle Alexander | 6h | 320 |
| 76 | 5.2.1.16 | Develop weekly status reports 16 | 0.4d | 2021-06-25 10:00 | 2021-06-25 12:00 | 5.56d | start no earlier than 2021-06-25 10:00 | Reggie Pratcher; William Chen; Michelle Alexander | 6h | 320 |
| 77 | 5.2.2 | **Maintain an issues log** | 118.8d | 2021-03-10 10:00 | 2021-06-23 12:00 | 8.76d |  |  | 64h | 2,560 |
| 78 | 5.2.2.1 | Maintain an issues log 1 | 0.4d | 2021-03-10 10:00 | 2021-03-10 12:00 | 127.16d | start no earlier than 2021-03-10 10:00 | Reggie Pratcher; William Chen | 4h | 160 |
| 79 | 5.2.2.2 | Maintain an issues log 2 | 0.4d | 2021-03-17 10:00 | 2021-03-17 12:00 | 119.16d | start no earlier than 2021-03-17 10:00 | Reggie Pratcher; William Chen | 4h | 160 |
| 80 | 5.2.2.3 | Maintain an issues log 3 | 0.4d | 2021-03-24 10:00 | 2021-03-24 12:00 | 111.16d | start no earlier than 2021-03-24 10:00 | Reggie Pratcher; William Chen | 4h | 160 |
| 81 | 5.2.2.4 | Maintain an issues log 4 | 0.4d | 2021-03-31 10:00 | 2021-03-31 12:00 | 103.16d | start no earlier than 2021-03-31 10:00 | Reggie Pratcher; William Chen | 4h | 160 |
| 82 | 5.2.2.5 | Maintain an issues log 5 | 0.4d | 2021-04-07 10:00 | 2021-04-07 12:00 | 95.16d | start no earlier than 2021-04-07 10:00 | Reggie Pratcher; William Chen | 4h | 160 |
| 83 | 5.2.2.6 | Maintain an issues log 6 | 0.4d | 2021-04-14 10:00 | 2021-04-14 12:00 | 87.16d | start no earlier than 2021-04-14 10:00 | Reggie Pratcher; William Chen | 4h | 160 |
| 84 | 5.2.2.7 | Maintain an issues log 7 | 0.4d | 2021-04-21 10:00 | 2021-04-21 12:00 | 79.16d | start no earlier than 2021-04-21 10:00 | Reggie Pratcher; William Chen | 4h | 160 |
| 85 | 5.2.2.8 | Maintain an issues log 8 | 0.4d | 2021-04-28 10:00 | 2021-04-28 12:00 | 71.16d | start no earlier than 2021-04-28 10:00 | Reggie Pratcher; William Chen | 4h | 160 |
| 86 | 5.2.2.9 | Maintain an issues log 9 | 0.4d | 2021-05-05 10:00 | 2021-05-05 12:00 | 63.16d | start no earlier than 2021-05-05 10:00 | Reggie Pratcher; William Chen | 4h | 160 |
| 87 | 5.2.2.10 | Maintain an issues log 10 | 0.4d | 2021-05-12 10:00 | 2021-05-12 12:00 | 55.16d | start no earlier than 2021-05-12 10:00 | Reggie Pratcher; William Chen | 4h | 160 |
| 88 | 5.2.2.11 | Maintain an issues log 11 | 0.4d | 2021-05-19 10:00 | 2021-05-19 12:00 | 47.16d | start no earlier than 2021-05-19 10:00 | Reggie Pratcher; William Chen | 4h | 160 |
| 89 | 5.2.2.12 | Maintain an issues log 12 | 0.4d | 2021-05-26 10:00 | 2021-05-26 12:00 | 39.16d | start no earlier than 2021-05-26 10:00 | Reggie Pratcher; William Chen | 4h | 160 |
| 90 | 5.2.2.13 | Maintain an issues log 13 | 0.4d | 2021-06-02 10:00 | 2021-06-02 12:00 | 32.76d | start no earlier than 2021-06-02 10:00 | Reggie Pratcher; William Chen | 4h | 160 |
| 91 | 5.2.2.14 | Maintain an issues log 14 | 0.4d | 2021-06-09 10:00 | 2021-06-09 12:00 | 24.76d | start no earlier than 2021-06-09 10:00 | Reggie Pratcher; William Chen | 4h | 160 |
| 92 | 5.2.2.15 | Maintain an issues log 15 | 0.4d | 2021-06-16 10:00 | 2021-06-16 12:00 | 16.76d | start no earlier than 2021-06-16 10:00 | Reggie Pratcher; William Chen | 4h | 160 |
| 93 | 5.2.2.16 | Maintain an issues log 16 | 0.4d | 2021-06-23 10:00 | 2021-06-23 12:00 | 8.76d | start no earlier than 2021-06-23 10:00 | Reggie Pratcher; William Chen | 4h | 160 |

Notes:
- 61: 3 people, 2 hours each
- 78: 2 employees, 2 hours each

| ID | WBS | Task | Duration | Start | Finish | Total slack | Constraint | Resources | Work | Cost |
| --- | --- | --- | --- | --- | --- | --- | --- | --- | --- | --- |
| 94 | 5.2.3 | **Develop and maintain a detailed project plan** | 128.79d | 2021-03-09 10:00 | 2021-06-29 12:00 | 0.37d |  |  | 162h | 7,840 |
| 95 | 5.2.3.1 | **Update the project plan with information from meetings, feedback, executives** | 128.79d | 2021-03-09 10:00 | 2021-06-29 12:00 | 0.37d |  |  | 102h | 5,440 |
| 96 | 5.2.3.1.1 | Update the project plan with information from meetings, feedback, executives 1 | 0.4d | 2021-03-09 10:00 | 2021-03-09 12:00 | 128.76d | start no earlier than 2021-03-09 10:00 | William Chen; Reggie Pratcher; Michelle Alexander | 6h | 320 |
| 97 | 5.2.3.1.2 | Update the project plan with information from meetings, feedback, executives 2 | 0.4d | 2021-03-16 10:00 | 2021-03-16 12:00 | 120.76d | start no earlier than 2021-03-16 10:00 | William Chen; Reggie Pratcher; Michelle Alexander | 6h | 320 |
| 98 | 5.2.3.1.3 | Update the project plan with information from meetings, feedback, executives 3 | 0.4d | 2021-03-23 10:00 | 2021-03-23 12:00 | 112.76d | start no earlier than 2021-03-23 10:00 | William Chen; Reggie Pratcher; Michelle Alexander | 6h | 320 |
| 99 | 5.2.3.1.4 | Update the project plan with information from meetings, feedback, executives 4 | 0.4d | 2021-03-30 10:00 | 2021-03-30 12:00 | 104.76d | start no earlier than 2021-03-30 10:00 | William Chen; Reggie Pratcher; Michelle Alexander | 6h | 320 |
| 100 | 5.2.3.1.5 | Update the project plan with information from meetings, feedback, executives 5 | 0.4d | 2021-04-06 10:00 | 2021-04-06 12:00 | 96.76d | start no earlier than 2021-04-06 10:00 | William Chen; Reggie Pratcher; Michelle Alexander | 6h | 320 |
| 101 | 5.2.3.1.6 | Update the project plan with information from meetings, feedback, executives 6 | 0.4d | 2021-04-13 10:00 | 2021-04-13 12:00 | 88.76d | start no earlier than 2021-04-13 10:00 | William Chen; Reggie Pratcher; Michelle Alexander | 6h | 320 |
| 102 | 5.2.3.1.7 | Update the project plan with information from meetings, feedback, executives 7 | 0.4d | 2021-04-20 10:00 | 2021-04-20 12:00 | 80.76d | start no earlier than 2021-04-20 10:00 | William Chen; Reggie Pratcher; Michelle Alexander | 6h | 320 |
| 103 | 5.2.3.1.8 | Update the project plan with information from meetings, feedback, executives 8 | 0.4d | 2021-04-27 10:00 | 2021-04-27 12:00 | 72.76d | start no earlier than 2021-04-27 10:00 | William Chen; Reggie Pratcher; Michelle Alexander | 6h | 320 |
| 104 | 5.2.3.1.9 | Update the project plan with information from meetings, feedback, executives 9 | 0.4d | 2021-05-04 10:00 | 2021-05-04 12:00 | 64.76d | start no earlier than 2021-05-04 10:00 | William Chen; Reggie Pratcher; Michelle Alexander | 6h | 320 |
| 105 | 5.2.3.1.10 | Update the project plan with information from meetings, feedback, executives 10 | 0.4d | 2021-05-11 10:00 | 2021-05-11 12:00 | 56.76d | start no earlier than 2021-05-11 10:00 | William Chen; Reggie Pratcher; Michelle Alexander | 6h | 320 |
| 106 | 5.2.3.1.11 | Update the project plan with information from meetings, feedback, executives 11 | 0.4d | 2021-05-18 10:00 | 2021-05-18 12:00 | 48.76d | start no earlier than 2021-05-18 10:00 | William Chen; Reggie Pratcher; Michelle Alexander | 6h | 320 |
| 107 | 5.2.3.1.12 | Update the project plan with information from meetings, feedback, executives 12 | 0.4d | 2021-05-25 10:00 | 2021-05-25 12:00 | 40.76d | start no earlier than 2021-05-25 10:00 | William Chen; Reggie Pratcher; Michelle Alexander | 6h | 320 |
| 108 | 5.2.3.1.13 | Update the project plan with information from meetings, feedback, executives 13 | 0.4d | 2021-06-01 10:00 | 2021-06-01 12:00 | 34.36d | start no earlier than 2021-06-01 10:00 | William Chen; Reggie Pratcher; Michelle Alexander | 6h | 320 |
| 109 | 5.2.3.1.14 | Update the project plan with information from meetings, feedback, executives 14 | 0.4d | 2021-06-08 10:00 | 2021-06-08 12:00 | 26.36d | start no earlier than 2021-06-08 10:00 | William Chen; Reggie Pratcher; Michelle Alexander | 6h | 320 |
| 110 | 5.2.3.1.15 | Update the project plan with information from meetings, feedback, executives 15 | 0.4d | 2021-06-15 10:00 | 2021-06-15 12:00 | 18.36d | start no earlier than 2021-06-15 10:00 | William Chen; Reggie Pratcher; Michelle Alexander | 6h | 320 |
| 111 | 5.2.3.1.16 | Update the project plan with information from meetings, feedback, executives 16 | 0.4d | 2021-06-22 10:00 | 2021-06-22 12:00 | 10.36d | start no earlier than 2021-06-22 10:00 | William Chen; Reggie Pratcher; Michelle Alexander | 6h | 320 |
| 112 | 5.2.3.1.17 | Update the project plan with information from meetings, feedback, executives 17 | 0.4d | 2021-06-29 10:00 | 2021-06-29 12:00 | 0.37d | start no earlier than 2021-06-29 10:00 | William Chen; Reggie Pratcher; Michelle Alexander | 6h | 320 |
| 113 | 5.2.3.2 | **Assess risks and control them** | 120.79d | 2021-03-15 10:00 | 2021-06-28 12:00 | 1.97d |  |  | 60h | 2,400 |
| 114 | 5.2.3.2.1 | Assess risks and control them 1 | 0.4d | 2021-03-15 10:00 | 2021-03-15 12:00 | 122.36d | start no earlier than 2021-03-15 10:00 | Reggie Pratcher; William Chen | 4h | 160 |
| 115 | 5.2.3.2.2 | Assess risks and control them 2 | 0.4d | 2021-03-22 10:00 | 2021-03-22 12:00 | 114.36d | start no earlier than 2021-03-22 10:00 | Reggie Pratcher; William Chen | 4h | 160 |
| 116 | 5.2.3.2.3 | Assess risks and control them 3 | 0.4d | 2021-03-29 10:00 | 2021-03-29 12:00 | 106.36d | start no earlier than 2021-03-29 10:00 | Reggie Pratcher; William Chen | 4h | 160 |
| 117 | 5.2.3.2.4 | Assess risks and control them 4 | 0.4d | 2021-04-05 10:00 | 2021-04-05 12:00 | 98.36d | start no earlier than 2021-04-05 10:00 | Reggie Pratcher; William Chen | 4h | 160 |
| 118 | 5.2.3.2.5 | Assess risks and control them 5 | 0.4d | 2021-04-12 10:00 | 2021-04-12 12:00 | 90.36d | start no earlier than 2021-04-12 10:00 | Reggie Pratcher; William Chen | 4h | 160 |
| 119 | 5.2.3.2.6 | Assess risks and control them 6 | 0.4d | 2021-04-19 10:00 | 2021-04-19 12:00 | 82.36d | start no earlier than 2021-04-19 10:00 | Reggie Pratcher; William Chen | 4h | 160 |
| 120 | 5.2.3.2.7 | Assess risks and control them 7 | 0.4d | 2021-04-26 10:00 | 2021-04-26 12:00 | 74.36d | start no earlier than 2021-04-26 10:00 | Reggie Pratcher; William Chen | 4h | 160 |
| 121 | 5.2.3.2.8 | Assess risks and control them 8 | 0.4d | 2021-05-03 10:00 | 2021-05-03 12:00 | 66.36d | start no earlier than 2021-05-03 10:00 | Reggie Pratcher; William Chen | 4h | 160 |
| 122 | 5.2.3.2.9 | Assess risks and control them 9 | 0.4d | 2021-05-10 10:00 | 2021-05-10 12:00 | 58.36d | start no earlier than 2021-05-10 10:00 | Reggie Pratcher; William Chen | 4h | 160 |
| 123 | 5.2.3.2.10 | Assess risks and control them 10 | 0.4d | 2021-05-17 10:00 | 2021-05-17 12:00 | 50.36d | start no earlier than 2021-05-17 10:00 | Reggie Pratcher; William Chen | 4h | 160 |
| 124 | 5.2.3.2.11 | Assess risks and control them 11 | 0.4d | 2021-05-24 10:00 | 2021-05-24 12:00 | 42.36d | start no earlier than 2021-05-24 10:00 | Reggie Pratcher; William Chen | 4h | 160 |
| 125 | 5.2.3.2.12 | Assess risks and control them 12 | 0.4d | 2021-06-07 10:00 | 2021-06-07 12:00 | 27.96d | start no earlier than 2021-06-07 10:00 | Reggie Pratcher; William Chen | 4h | 160 |
| 126 | 5.2.3.2.13 | Assess risks and control them 13 | 0.4d | 2021-06-14 10:00 | 2021-06-14 12:00 | 19.96d | start no earlier than 2021-06-14 10:00 | Reggie Pratcher; William Chen | 4h | 160 |
| 127 | 5.2.3.2.14 | Assess risks and control them 14 | 0.4d | 2021-06-21 10:00 | 2021-06-21 12:00 | 11.96d | start no earlier than 2021-06-21 10:00 | Reggie Pratcher; William Chen | 4h | 160 |
| 128 | 5.2.3.2.15 | Assess risks and control them 15 | 0.4d | 2021-06-28 10:00 | 2021-06-28 12:00 | 1.97d | start no earlier than 2021-06-28 10:00 | Reggie Pratcher; William Chen | 4h | 160 |

Notes:
- 96: 3 employees, 2 hours each
- 114: 2 employees, 2 hours each

| ID | WBS | Task | Duration | Start | Finish | Predecessors | Total slack | Resources | Work | Cost |
| --- | --- | --- | --- | --- | --- | --- | --- | --- | --- | --- |
| 129 | 6 | **Develop and Implement data to LV** | 54.02d? | 2021-03-18 09:08 | 2021-05-04 16:14 |  | 0d |  | 1541h | 407,703.33 |
| 130 | 6.1 | **Information Security Setup** | 5.33d? | 2021-03-18 09:08 | 2021-03-23 11:46 |  | 0d |  | 92h | 36,290.33 |
| 131 | 6.1.1 | LIS creates AWS account for CP | 1d? | 2021-03-18 09:08 | 2021-03-18 15:08 | 25 | 0d | Joel Thomas; Geddy Lee | 10h |  |
| 132 | 6.1.2 | LIS creates database system in AWS account | 0.6d? | 2021-03-18 15:08 | 2021-03-19 09:08 | 131 | 0d | Joel Thomas; Geddy Lee; Jennifer Williams; Raymond Bragman; Reggie Pratcher | 15h |  |
| 133 | 6.1.3 | LIS loads LV software into CP’s AWS account | 2.16d | 2021-03-19 09:08 | 2021-03-22 11:56 | 132 | 0d | Joel Thomas; Geddy Lee; Jennifer Williams; Raymond Bragman; Reggie Pratcher | 54h |  |
| 134 | 6.1.4 | LIS test credentials to LV in the cloud | 0.3d | 2021-03-22 11:56 | 2021-03-22 14:26 | 133 | 0d | Geddy Lee; Steven Markman; Jennifer Williams; Joel Thomas; Reggie Pratcher; Rebecca Young | 9h |  |
| 135 | 6.1.5 | CP tests credentials to LV in the cloud | 0.27d | 2021-03-22 14:26 | 2021-03-22 15:46 | 134 | 0d | Farida Hussain; Mark Collier; Tyler Sullivan | 4h | 293.33 |
| 136 | 6.1.6 | CP signs off on Information Security setup | 1d | 2021-03-22 15:46 | 2021-03-23 11:46 | 135 | 0d | P1-Information Security Setup |  | 35,997 |
| 137 | 6.2 | **Chevron SOX Compliance** | 14.21d | 2021-03-23 11:46 | 2021-04-05 10:48 |  | 0d |  | 211h | 45,972.33 |
| 138 | 6.2.1 | LIS Develops SOX compliance components for LV Cloud System | 0.24d | 2021-03-23 11:46 | 2021-03-23 13:58 | 131, 136 | 0d | Farida Hussain; Beth Young; Jacqueline Webster; Larry Olga; Richard Hand; Sandra Verry; Sarah Henson; Geddy Lee; Jennifer Williams; Michael Hensel | 12h | 474 |
| 139 | 6.2.2 | LIS tests SOX compliance for LV Cloud System | 0.9d | 2021-03-23 13:58 | 2021-03-24 09:28 | 138 | 0d | Geddy Lee; Joel Thomas; Kristina Squire; Jennifer Williams | 18h |  |
| 140 | 6.2.3 | CP and Chevron test SOX compliance for LV Cloud System | 12.07d | 2021-03-24 09:28 | 2021-04-02 14:48 | 139 | 0d | Farida Hussain; Tyler Sullivan; Mark Collier | 181h | 13,273.33 |
| 141 | 6.2.4 | CP and Chevron approve Chevron SOX Compliance | 1d | 2021-04-02 14:48 | 2021-04-05 10:48 | 140 | 0d | P2-Chevron SOX Compliance |  | 32,225 |
| 142 | 6.3 | **Conduct agile sprint for data conversion** | 34.49d? | 2021-04-05 10:48 | 2021-05-04 16:14 |  | 0d |  | 1238h | 325,440.67 |
| 143 | 6.3.1 | **Source Land Data** | 19.85d? | 2021-04-05 10:48 | 2021-04-21 15:01 |  | 0d |  | 708h | 206,066.67 |
| 144 | 6.3.1.1 | Callon Petroleum prepares land data for export to Dropbox | 2.57d? | 2021-04-05 10:48 | 2021-04-06 16:39 | 141 | 0d | Jason Donahue; Mark Collier; Michelle Alexander; Rebekeh Granbery; Stanley Estep; Tyler Sullivan; William Chen | 90h | 5,850 |
| 145 | 6.3.1.2 | LIS downloads land data from secured Dropbox | 1.63d? | 2021-04-06 16:39 | 2021-04-07 16:48 | 144 | 0d | Geddy Lee; Jennifer Williams; Steven Markman; Michael Hensel; Raymond Bragman; Rebecca Young; Reggie Pratcher | 57h |  |
| 146 | 6.3.1.3 | LIS maps files to LV system | 3d? | 2021-04-07 16:48 | 2021-04-09 15:48 | 145 | 0d | Geddy Lee; Jennifer Williams; Steven Markman; Michael Hensel; Raymond Bragman; Rebecca Young; Reggie Pratcher | 105h |  |
| 147 | 6.3.1.4 | LIS finalizes mapping structure | 0.63d? | 2021-04-09 15:48 | 2021-04-12 09:56 | 146 | 0d | Geddy Lee; Jennifer Williams; Steven Markman; Michael Hensel; Raymond Bragman; Rebecca Young; Reggie Pratcher | 22h |  |
| 148 | 6.3.1.5 | LIS develops and load test data to ensure data gets successfully imported | 6d? | 2021-04-12 09:56 | 2021-04-15 16:56 | 147, 141 | 0d | Geddy Lee; Jennifer Williams; Steven Markman; Kristina Squire; Michael Hensel; Raymond Bragman; Rebecca Young; Reggie Pratcher | 240h |  |
| 149 | 6.3.1.6 | CP, Chevron, and LIS review and approve test data | 0.67d? | 2021-04-15 16:56 | 2021-04-16 11:16 | 148 | 0d | Mark Collier; Michelle Alexander; Tyler Sullivan; Andrew Hopmann; Reggie Pratcher; William Chen | 20h | 1,016.67 |
| 150 | 6.3.1.7 | LIS imports all land data and validates the integrity of the files | 4.35d? | 2021-04-16 11:16 | 2021-04-21 09:01 | 149 | 0d | Geddy Lee; Jennifer Williams; Steven Markman; Kristina Squire; Michael Hensel; Raymond Bragman; Rebecca Young; Reggie Pratcher | 174h |  |
| 151 | 6.3.1.8 | Approve land data conversion | 1d | 2021-04-21 09:01 | 2021-04-21 15:01 | 150 | 0d | P3-Land Data Conversion |  | 199,200 |
| 152 | 6.3.2 | **Source Documents** | 14.64d? | 2021-04-21 15:01 | 2021-05-04 16:14 |  | 0d |  | 530h | 119,374 |
| 153 | 6.3.2.1 | Callon Petroleum prepares drives and other sources for unstructured data for export | 3.14d? | 2021-04-21 15:01 | 2021-04-23 14:44 | 151 | 0d | Jason Donahue; Mark Collier; Michelle Alexander; Rebekeh Granbery; Stanley Estep; Tyler Sullivan; William Chen | 110h | 7,150 |
| 154 | 6.3.2.2 | Repeat tasks 77-83 but alter it for data (LIS downloads data, map structure, test data, approve data, import all data and validate them) | 10.5d? | 2021-04-23 14:44 | 2021-05-04 10:14 | 143, 153 | 0d | Andrew Hopmann; Geddy Lee; Jennifer Williams; Steven Markman; Michael Hensel; Raymond Bragman; Rebecca Young; Reggie Pratcher | 420h |  |
| 155 | 6.3.2.3 | Approve source documents | 1d | 2021-05-04 10:14 | 2021-05-04 16:14 | 154 | 0d | P4-Document Conversion |  | 112,224 |

| ID | WBS | Task | Type | Duration | Start | Finish | Predecessors | Total slack | Resources | Work | Cost |
| --- | --- | --- | --- | --- | --- | --- | --- | --- | --- | --- | --- |
| 156 | 7 | **Integrations** |  | 27.24d? | 2021-05-04 16:14 | 2021-05-27 16:26 |  | 0d |  | 324h | 88,920.84 |
| 157 | 7.1 | **LIS Develops Direct Accounting Integration (LIS brings Accounting Program directly into LV)** |  | 15.24d? | 2021-05-04 16:14 | 2021-05-18 11:26 |  | 0d |  | 199h | 19,660.84 |
| 158 | 7.1.1 | Chevron converts all data from CP’s legacy ACCTing system into Chevron’s system | milestone | 0d? | 2021-05-04 16:14 | 2021-05-04 16:14 | 155 | 0d |  |  |  |
| 159 | 7.1.2 | LIS, Client and Accounting company have kickoff call discussing integrating and mapping |  | 1.75d? | 2021-05-04 16:14 | 2021-05-05 16:59 | 158 | 0d | Joel Thomas; Barbara Thompson; Bryan Chapman; Corey Bolding | 28h | 1,050 |
| 160 | 7.1.3 | Programming team sets meeting with Client accounting software team to review all fields and LIS LandVantage calculations based on Accounting data |  | 4.18d? | 2021-05-05 16:59 | 2021-05-10 13:54 | 159 | 0d | Joel Thomas; Barbara Thompson; Bryan Chapman | 46h | 2,509.09 |
| 161 | 7.1.4 | NDA’s signed between both vendor companies not to abuse use of back end data or code related data |  | 0.36d? | 2021-05-10 13:54 | 2021-05-10 15:43 | 160 | 0d | Joel Thomas; Barbara Thompson; Bryan Chapman | 4h | 218.18 |
| 162 | 7.1.5 | LIS exposes code to Accounting Team allowing them to directly tie into LV |  | 3.14d? | 2021-05-10 15:43 | 2021-05-12 15:26 | 161 | 0d | Barbara Thompson; Bryan Chapman; Joel Thomas | 22h | 377.14 |
| 163 | 7.1.6 | LIS testing of LandVantage transactions in Beta allows team members to view accounting data and changes made in real time (all pull changes, no push) |  | 2.95d? | 2021-05-12 15:26 | 2021-05-14 14:11 | 162 | 0d | Geddy Lee; Kristina Squire; Michael Hensel; Barbara Thompson; Bryan Chapman; Joel Thomas | 62h | 1,771.43 |
| 164 | 7.1.7 | CP/Chevron land and accounting folks test transactions in beta database |  | 1.85d? | 2021-05-14 14:11 | 2021-05-17 15:26 | 163 | 0d | Barbara Thompson; Bryan Chapman; Joel Thomas; Kristina Squire | 37h | 1,110 |
| 165 | 7.1.8 | CP/Chevron sign off on Direct Accounting Integration |  | 1d? | 2021-05-17 15:26 | 2021-05-18 11:26 | 164 | 0d | P7-Account Integration |  | 12,625 |
| 166 | 7.2 | **LIS develops CP GIS** |  | 6d | 2021-05-18 11:26 | 2021-05-24 09:26 |  | 0d |  | 75h | 31,637.5 |
| 167 | 7.2.1 | LIS develops the CP GIS Integration |  | 1d | 2021-05-18 11:26 | 2021-05-19 08:26 | 165 | 0d | Michael Hensel; Geddy Lee | 10h |  |
| 168 | 7.2.2 | LIS CP GIS integration |  | 1.5d | 2021-05-19 08:26 | 2021-05-19 16:56 | 167 | 0d | Michael Hensel; Geddy Lee | 15h |  |
| 169 | 7.2.3 | CP test CP GIS integration |  | 2.5d | 2021-05-19 16:56 | 2021-05-21 13:26 | 168 | 0d | Michael Hensel; Farida Hussain; Mark Collier; Geddy Lee | 50h | 1,812.5 |
| 170 | 7.2.4 | CP approves CP GIS integration |  | 1d | 2021-05-21 13:26 | 2021-05-24 09:26 | 169 | 0d | P5-GIS Integration to CP's ArkMap |  | 29,825 |
| 171 | 7.3 | **LIS develops Chevron GIS integration** |  | 6d | 2021-05-24 09:26 | 2021-05-27 16:26 |  | 0d |  | 50h | 37,622.5 |
| 172 | 7.3.1 | Create GIS features for Chevron and create nightly refresh of shape files to ChevMAP |  | 1d | 2021-05-24 09:26 | 2021-05-24 15:26 | 170 | 0d | Geddy Lee; Michael Hensel | 10h |  |
| 173 | 7.3.2 | LIS test Chevron GIS integration |  | 1.5d | 2021-05-24 15:26 | 2021-05-25 14:56 | 172 | 0d | Geddy Lee; Michael Hensel | 15h |  |
| 174 | 7.3.3 | Chevron test Chevron GIS integration |  | 2.5d | 2021-05-25 14:56 | 2021-05-27 10:26 | 173 | 0d | Michelle Alexander; Tyler Sullivan | 25h | 1,937.5 |
| 175 | 7.3.4 | Approve GIS integration to ChevMAP |  | 1d | 2021-05-27 10:26 | 2021-05-27 16:26 | 174 | 36.87d | P6-GIS Integration to ChevMap |  | 35,685 |
| 176 | 8 | **Software/System Testing** |  | 21.92d? | 2021-05-27 10:26 | 2021-06-17 08:01 |  | 0d |  | 834h | 83,296.75 |
| 177 | 8.1 | LIS verifies everything is correct and all data was converted/integrated |  | 1d? | 2021-05-27 10:26 | 2021-05-27 16:26 | 174 | 0d | Geddy Lee; Joel Thomas; Kristina Squire; Reggie Pratcher | 20h |  |
| 178 | 8.2 | **Conduct system testing** |  | 20.92d? | 2021-05-27 16:26 | 2021-06-17 08:01 |  | 0d |  | 814h | 83,296.75 |
| 179 | 8.2.1 | Assign beta testers and system admins |  | 0.2d? | 2021-05-27 16:26 | 2021-05-28 08:26 | 177 | 0d | Reggie Pratcher; William Chen; Michelle Alexander | 3h | 160 |
| 180 | 8.2.2 | Conduct SOX testing |  | 10d | 2021-05-28 08:26 | 2021-06-08 10:26 | 179 | 0d | Farida Hussain; Tyler Sullivan; Mark Collier | 150h | 11,000 |
| 181 | 8.2.3 | Beta testers work with internal techs to go through all fields to ensure quality and correctness |  | 2.5d? | 2021-06-08 10:26 | 2021-06-09 15:56 | 180 | 5.42d | Andrew Hopmann; Farida Hussain; Geddy Lee; Jason Donahue; Rebekeh Granbery; Stanley Estep; Jennifer Williams; Michael Hensel; Raymond Bragman; Rebecca Young; Reggie Pratcher; Steven Markman | 150h | 2,812.5 |
| 182 | 8.2.4 | Stress testing |  | 7.92d? | 2021-06-08 10:26 | 2021-06-15 10:01 | 180 | 0d | Andrew Hopmann; Farida Hussain; Geddy Lee; Jason Donahue; Rebekeh Granbery; Stanley Estep; Jennifer Williams; Michael Hensel; Raymond Bragman; Rebecca Young; Reggie Pratcher; Steven Markman | 475h | 8,906.25 |
| 183 | 8.2.5 | Meet with stakeholders and executives to introduce the beta software and receive feedback |  | 0.6d? | 2021-06-15 10:01 | 2021-06-15 14:01 | 181, 182 | 0d | Jeff Balmer; Michelle Alexander; Michol Ecklund; Reggie Pratcher; Rex Bigler; William Chen | 18h | 480 |
| 184 | 8.2.6 | Alter/improve system based on feedback from stakeholders and executives |  | 1.2d? | 2021-06-15 14:01 | 2021-06-16 11:01 | 183 | 0d | Joel Thomas; Reggie Pratcher; William Chen | 18h | 480 |
| 185 | 8.2.7 | Beta testers approve software/system |  | 1d? | 2021-06-16 11:01 | 2021-06-17 08:01 | 184 | 0d | P8-Successful System Testing |  | 59,458 |

Notes:
- 157: Heavy lifting will be done exclusively on Chevron's side. LIS and CP will not be doing much here
- 180: Additional 2 weeks of testing for Chevron SOX compliance
- 181: Additional testing for accounting and GIS updates for Chevron
- 183: 6 employees, 3 hours each

| ID | WBS | Task | Duration | Start | Finish | Predecessors | Total slack | Resources | Work | Cost |
| --- | --- | --- | --- | --- | --- | --- | --- | --- | --- | --- |
| 186 | 9 | **Training/Go-Live Kickoff** | 13.35d? | 2021-06-17 08:01 | 2021-06-28 08:49 |  | 0d |  | 1074h | 71,268.07 |
| 187 | 9.1 | LV team onsite at Callon Petroleum and Chevron for end-user training | 1.56d? | 2021-06-17 08:01 | 2021-06-17 16:48 | 185 | 0d | Andrew Hopmann; Reggie Pratcher; William Chen; Cherise Johnson; Farida Hussain; Jason Donahue; Mark Collier; Rebekeh Granbery; Stanley Estep | 70h | 3,383.33 |
| 188 | 9.2 | **Receive user feedback** | 2.28d? | 2021-06-17 16:48 | 2021-06-21 11:12 |  | 0d |  | 42h | 912 |
| 189 | 9.2.1 | Meet with stakeholders regarding user feedback | 1.28d? | 2021-06-17 16:48 | 2021-06-18 15:12 | 187 | 0d | Reggie Pratcher; William Chen; Jeff Balmer; Michol Ecklund; Rex Bigler | 32h | 512 |
| 190 | 9.2.2 | Adjust software based on user feedback | 1d? | 2021-06-18 15:12 | 2021-06-21 11:12 | 189 | 0d | Reggie Pratcher; William Chen | 10h | 400 |
| 191 | 9.3 | **Conduct Go-Live Kickoff** | 9.52d | 2021-06-21 11:12 | 2021-06-28 08:49 |  | 0d |  | 962h | 66,972.74 |
| 192 | 9.3.1 | Develop go-live plan | 0.48d | 2021-06-21 11:12 | 2021-06-21 14:36 | 190 | 0d | Michelle Alexander; Reggie Pratcher; William Chen; Farida Hussain; Mark Collier | 12h | 732 |
| 193 | 9.3.2 | Practice go-live plan | 5.04d | 2021-06-21 14:36 | 2021-06-24 15:47 | 192 | 0d | Michelle Alexander; Reggie Pratcher; William Chen; Farida Hussain; Mark Collier; Andrew Hopmann; Barbara Thompson; Beth Young; Bryan Chapman; Cherise Johnson; Geddy Lee; Jacqueline Webster; Jason Donahue; Jennifer Williams; Joel Thomas; Kristina Squire; Larry Olga; Michael Hensel; Raymond Bragman; Rebecca Young; Rebekeh Granbery; Richard Hand; Sandra Verry; Sarah Henson; Stanley Estep; Steven Markman; Tyler Sullivan | 680h | 25,940.74 |
| 194 | 9.3.3 | Conduct go-live | 2d | 2021-06-25 11:47 | 2021-06-27 10:48 | 193FS+1d | 0d | Michelle Alexander; Reggie Pratcher; William Chen; Farida Hussain; Mark Collier; Andrew Hopmann; Barbara Thompson; Beth Young; Bryan Chapman; Cherise Johnson; Geddy Lee; Jacqueline Webster; Jason Donahue; Jennifer Williams; Joel Thomas; Kristina Squire; Larry Olga; Michael Hensel; Raymond Bragman; Rebecca Young; Rebekeh Granbery; Richard Hand; Sandra Verry; Sarah Henson; Stanley Estep; Steven Markman; Tyler Sullivan | 270h | 10,300 |
| 195 | 9.3.4 | CP and Chevron approve go-live | 1d | 2021-06-27 10:48 | 2021-06-28 08:49 | 194 | 2.6d | P9-Training and End User Acceptance Testing |  | 30,000 |
| 196 | 10 | **Close out project** | 3.6d? | 2021-06-27 10:48 | 2021-06-29 14:49 |  | 0d |  | 98h | 126,315 |
| 197 | 10.1 | Gain stakeholder and executive approval | 1d? | 2021-06-27 10:48 | 2021-06-28 08:49 | 194 | 0d | Corey Bolding; Jeff Balmer; Michol Ecklund; Reggie Pratcher; Rex Bigler; William Chen | 30h | 400 |
| 198 | 10.2 | **Develop final project report** | 1.6d? | 2021-06-28 08:49 | 2021-06-29 08:49 |  | 0d |  | 68h | 2,940 |
| 199 | 10.2.1 | Verify all deliverables were delivered | 1d? | 2021-06-28 08:49 | 2021-06-28 14:49 | 197 | 0d | William Chen | 5h | 400 |
| 200 | 10.2.2 | Meet with team to summarize how the process went | 0.4d? | 2021-06-28 14:49 | 2021-06-28 16:49 | 199 | 1.2d | William Chen; Andrew Hopmann; Barbara Thompson; Beth Young; Bryan Chapman; Cherise Johnson; Farida Hussain; Geddy Lee; Jacqueline Webster; Jason Donahue; Jennifer Williams; Joel Thomas; Kristina Squire; Larry Olga; Mark Collier; Michael Hensel; Michelle Alexander; Raymond Bragman; Rebecca Young; Rebekeh Granbery; Reggie Pratcher; Richard Hand; Sandra Verry; Sarah Henson; Stanley Estep; Steven Markman; Tyler Sullivan | 54h | 2,060 |
| 201 | 10.2.3 | Develop plan to maintain system | 0.6d? | 2021-06-28 14:49 | 2021-06-29 08:49 | 199 | 0d | Michelle Alexander; Reggie Pratcher; William Chen | 9h | 480 |
| 202 | 10.3 | Sign project completion contract | 1d? | 2021-06-29 08:49 | 2021-06-29 14:49 | 201 | 0d | P10-Statement of Completion; P11-Software Subscription |  | 122,975 |

Notes:
- 187: Payment does not include travel expenses
- 200: 27 employees, 2 hours each
